Schedule from MS Project, 2012-09-04 to 2012-12-04, A marks actual dates.

## Calendars

- Стандартный: Mon-Fri 09:00-13:00, 14:00-18:00; Sat-Sun off.

## Resources

| Resource |
| --- |
| Нияз Аббасов |
| Эльбей Алиев |
| Тургут Мехтиев |

## Schedule

| ID | WBS | Task | Type | Duration | Start | Finish | Predecessors | Complete | Remaining | Baseline start | Baseline finish | Baseline duration | Total slack | Free slack | Constraint | Resources | Work | Actual work |
| --- | --- | --- | --- | --- | --- | --- | --- | --- | --- | --- | --- | --- | --- | --- | --- | --- | --- | --- |
| 1 | 1 | **Этап 1** |  | 65.5d? | 2012-09-04 A | 2012-12-04 |  | 14% | 56.36d? | 2012-09-04 | 2012-12-04 | 65.5d? | 0d |  |  |  | 1146h | 160h |
| 2 | 1.1 | Этап 1 | milestone | 0d? | 2012-09-04 | 2012-09-04 |  |  |  | 2012-09-04 | 2012-09-04 | 0d? | 0d |  | must start on 2012-09-04 |  |  |  |
| 3 | 1.2 | **MS Administrator** |  | 65.5d? | 2012-09-04 A | 2012-12-04 |  | 12% | 57.83d? | 2012-09-04 | 2012-12-04 | 65.5d? | 0d |  |  |  | 854h | 100h |
| 4 | 1.2.1 | Управление пользователями |  | 2d | 2012-09-04 | 2012-09-06 |  |  |  | 2012-09-04 | 2012-09-05 | 2d | 62.5d | 0d |  | Нияз Аббасов | 16h |  |
| 5 | 1.2.2 | Управление привилегиями пользователей |  | 1d | 2012-09-06 | 2012-09-07 | 4 |  |  | 2012-09-06 | 2012-09-06 | 1d | 62.5d |  |  | Нияз Аббасов | 8h |  |
| 6 | 1.2.3 | Авторизация пользователя |  | 2d | 2012-09-12 A | 2012-09-14 A | 5 | 100% |  | 2012-09-12 | 2012-09-14 | 2d |  |  |  | Нияз Аббасов | 16h | 16h |
| 7 | 1.2.4 | **Точки трансляции** |  | 31.88d | 2012-09-04 A | 2012-10-17 |  | 33% | 21.33d | 2012-09-04 | 2012-10-17 | 32d | 18.62d |  |  |  | 254h | 84h |
| 8 | 1.2.4.1 | Управление иерархической структурой Группы точек трансляций |  | 9.88d | 2012-09-04 A | 2012-09-17 | 31 | 51% | 4.88d | 2012-09-04 | 2012-09-17 | 10d | 24.12d | 0.12d |  | Эльбей Алиев | 79h | 40h |
| 9 | 1.2.4.2 | Управление точкой трансляции |  | 21.88d | 2012-09-18 A | 2012-10-17 | 8 | 25% | 16.38d | 2012-09-18 | 2012-10-17 | 22d | 18.62d | 0d |  | Эльбей Алиев | 175h | 44h |
| 10 | 1.2.5 | Управление медиа данными |  | 11d | 2012-09-19 | 2012-10-04 | 35 |  |  | 2012-09-19 | 2012-10-04 | 11d | 0d |  |  | Тургут Мехтиев | 88h |  |
| 11 | 1.2.6 | Управления медиа группами |  | 10d | 2012-10-04 | 2012-10-18 | 10 |  |  | 2012-10-04 | 2012-10-18 | 10d | 0d |  |  | Тургут Мехтиев | 80h |  |
| 12 | 1.2.7 | **Управление расписаниями трансляций** |  | 13d? | 2012-09-18 | 2012-10-05 |  |  |  | 2012-09-18 | 2012-10-04 | 13d? | 24.5d |  |  |  | 104h |  |
| 13 | 1.2.7.1 | Создание нового расписания трансляции |  | 2d | 2012-09-18 | 2012-09-20 | 25 |  |  | 2012-09-18 | 2012-09-19 | 2d | 24.5d | 0d | start no earlier than 2012-09-12 | Нияз Аббасов | 16h |  |
| 14 | 1.2.7.2 | Редактирование нового расписания трансляции |  | 1d | 2012-09-20 | 2012-09-21 | 13 |  |  | 2012-09-20 | 2012-09-20 | 1d | 24.5d | 0d |  | Нияз Аббасов | 8h |  |
| 15 | 1.2.7.3 | Добавление элемента в расписание трансляции |  | 4d | 2012-09-21 | 2012-09-27 | 14 |  |  | 2012-09-21 | 2012-09-26 | 4d | 24.5d | 0d |  | Нияз Аббасов | 32h |  |
| 16 | 1.2.7.4 | Редактирование элемента в расписании трансляции |  | 2d | 2012-09-27 | 2012-10-01 | 15 |  |  | 2012-09-27 | 2012-09-28 | 2d | 24.5d | 0d |  | Нияз Аббасов | 16h |  |
| 17 | 1.2.7.5 | Анализ последовательности расписания трансляции |  | 3d? | 2012-10-01 | 2012-10-04 | 16 |  |  | 2012-10-01 | 2012-10-03 | 3d? | 24.5d | 0d |  | Нияз Аббасов | 24h |  |
| 18 | 1.2.7.6 | Удаление элемента расписания трансляции |  | 1d | 2012-10-04 | 2012-10-05 | 17 |  |  | 2012-10-04 | 2012-10-04 | 1d | 24.5d | 0d |  | Нияз Аббасов | 8h |  |
| 19 | 1.2.8 | **Управление экстренными трансляциями** |  | 10d | 2012-10-18 | 2012-10-31 |  |  |  | 2012-10-18 | 2012-10-31 | 10d | 18.62d | 0d |  |  | 80h |  |
| 20 | 1.2.8.1 | Экстренная трансляция |  | 10d | 2012-10-18 | 2012-10-31 | 9 |  |  | 2012-10-18 | 2012-10-31 | 10d | 18.62d |  |  | Эльбей Алиев | 80h |  |
| 21 | 1.2.9 | **Отчеты** |  | 57.5d | 2012-09-14 | 2012-12-04 |  |  |  | 2012-09-14 | 2012-12-04 | 57.5d | 0d |  |  |  | 208h |  |
| 22 | 1.2.9.1 | По операциям |  | 4d | 2012-10-10 | 2012-10-16 | 33 |  |  | 2012-10-10 | 2012-10-15 | 4d | 24.5d | 0d |  | Нияз Аббасов | 32h |  |
| 23 | 1.2.9.2 | Отчет по трансляциям |  | 8d | 2012-11-22 | 2012-12-04 | 42 |  |  | 2012-11-22 | 2012-12-04 | 8d | 0d |  |  | Тургут Мехтиев | 64h |  |
| 24 | 1.2.9.3 | Отчет о доставке медиа файлов |  | 7d | 2012-10-18 | 2012-10-29 | 11 |  |  | 2012-10-18 | 2012-10-29 | 7d | 0d |  |  | Тургут Мехтиев | 56h |  |
| 25 | 1.2.9.4 | Отчет о входе и выходе пользователей |  | 2d | 2012-09-14 | 2012-09-18 | 6 |  |  | 2012-09-14 | 2012-09-17 | 2d | 24.5d | 0d |  | Нияз Аббасов | 16h |  |
| 26 | 1.2.9.5 | Отчет об управлении точек трансляций |  | 5d | 2012-11-01 | 2012-11-07 | 19 |  |  | 2012-11-01 | 2012-11-07 | 5d | 18.62d |  | start no earlier than 2012-10-02 | Эльбей Алиев | 40h |  |

| ID | WBS | Task | Duration | Start | Finish | Predecessors | Complete | Remaining | Baseline start | Baseline finish | Baseline duration | Total slack | Free slack | Resources | Work | Actual work |
| --- | --- | --- | --- | --- | --- | --- | --- | --- | --- | --- | --- | --- | --- | --- | --- | --- |
| 27 | 1.3 | **MS Server** | 26d | 2012-09-04 A | 2012-10-10 |  | 48% | 13.42d | 2012-09-04 | 2012-10-09 | 26d | 24.5d |  |  | 124h | 60h |
| 28 | 1.3.1 | Установка баз данных | 0.5d | 2012-09-04 A | 2012-09-04 A |  | 100% |  | 2012-09-04 | 2012-09-04 | 0.5d |  |  | Тургут Мехтиев | 4h | 4h |
| 29 | 1.3.2 | Функциональность для подключения и управления данными в БД | 3d | 2012-09-04 A | 2012-09-07 A | 28 | 100% |  | 2012-09-04 | 2012-09-07 | 3d |  |  | Тургут Мехтиев | 24h | 24h |
| 30 | 1.3.3 | Функционалность для приема и фильтрации запросов поступаюших на сервер | 3d | 2012-09-07 A | 2012-09-12 A | 29 | 100% |  | 2012-09-07 | 2012-09-12 | 3d |  |  | Тургут Мехтиев | 24h | 24h |
| 31 | 1.3.4 | Установка FTP сервера | 1d | 2012-09-04 A | 2012-09-05 A |  | 100% |  | 2012-09-04 | 2012-09-05 | 1d |  |  | Эльбей Алиев | 8h | 8h |
| 32 | 1.3.5 | Функциональность для генерации файлового описания расписания | 2d | 2012-10-05 | 2012-10-09 | 18 |  |  | 2012-10-05 | 2012-10-08 | 2d | 24.5d | 0d | Нияз Аббасов | 16h |  |
| 33 | 1.3.6 | Функциональность для отправки файлового описания расписания на точку трансляции | 1d | 2012-10-09 | 2012-10-10 | 32 |  |  | 2012-10-09 | 2012-10-09 | 1d | 24.5d | 0d | Нияз Аббасов | 8h |  |
| 34 | 1.3.7 | Функциональность для добавления медиа файлов на сервер | 2d | 2012-09-12 | 2012-09-14 | 30 |  |  | 2012-09-12 | 2012-09-14 | 2d | 0d |  | Тургут Мехтиев | 16h |  |
| 35 | 1.3.8 | Функциональность для отправления медиа файлов с сервер на точки трансляции | 3d | 2012-09-14 | 2012-09-19 | 34 |  |  | 2012-09-14 | 2012-09-19 | 3d | 0d |  | Тургут Мехтиев | 24h |  |
| 36 | 1.4 | **MS Broadcaster** | 27.5d | 2012-10-16 | 2012-11-22 |  |  |  | 2012-10-16 | 2012-11-22 | 27.5d | 8d |  |  | 168h |  |
| 37 | 1.4.1 | **Создание медия плеера** | 8d | 2012-10-29 | 2012-11-08 |  |  |  | 2012-10-29 | 2012-11-08 | 8d | 0d |  |  | 64h |  |
| 38 | 1.4.1.1 | Функциональность для вещания медиа файлов (Audio, Video,Фото) | 5d | 2012-10-29 | 2012-11-05 | 24 |  |  | 2012-10-29 | 2012-11-05 | 5d | 0d |  | Тургут Мехтиев | 40h |  |
| 39 | 1.4.1.2 | "Running Text" | 3d | 2012-11-05 | 2012-11-08 | 38 |  |  | 2012-11-05 | 2012-11-08 | 3d | 0d |  | Тургут Мехтиев | 24h |  |
| 40 | 1.4.2 | Генерация суточного графика | 5d | 2012-10-16 | 2012-10-23 | 22 |  |  | 2012-10-16 | 2012-10-22 | 5d | 24.5d | 0d | Нияз Аббасов | 40h |  |
| 41 | 1.4.3 | Функциональность проведения трансляции по суточному графику | 5d | 2012-10-23 | 2012-10-30 | 40 |  |  | 2012-10-23 | 2012-10-29 | 5d | 24.5d | 0d | Нияз Аббасов | 40h |  |
| 42 | 1.4.4 | Функциональность управление экстренными трансляциями | 2d | 2012-11-20 | 2012-11-22 | 39 |  |  | 2012-11-20 | 2012-11-22 | 2d | 0d |  | Тургут Мехтиев | 16h |  |
| 43 | 1.4.5 | Назначения структуры расписания | 0.5d | 2012-10-30 | 2012-10-30 | 41 |  |  | 2012-10-30 | 2012-10-30 | 0.5d | 24.5d | 0d | Нияз Аббасов | 4h |  |
| 44 | 1.4.6 | Назначения структуры графика вещания | 0.5d | 2012-10-30 | 2012-10-31 | 43 |  |  | 2012-10-30 | 2012-10-30 | 0.5d | 24.5d |  | Нияз Аббасов | 4h |  |
