# Qrafik

Schedule from MS Project, 2012-08-07 to 2012-11-21.

## Calendars

- Standard: Mon-Fri 09:00-13:00, 14:00-18:00; Sat-Sun off.

## Resources

| Resource |
| --- |
| Turqut |
| Turqut Mehdiyev |
| Elbəy Əliyev |
| Niyaz Abbasov |

## Schedule

| ID | WBS | Task | Type | Duration | Start | Finish | Predecessors | Resources | Work |
| --- | --- | --- | --- | --- | --- | --- | --- | --- | --- |
| 1 | 1 | **MS Administrator** |  | 72d | 2012-08-09 | 2012-11-16 |  |  | 1157h |
| 2 | 1.1 | **İstifadəçilərin idarə olunması** |  | 5d | 2012-08-13 | 2012-08-17 |  |  | 40h |
| 3 | 1.1.1 | İstifadəçi əlavə etmək | manual | 2d | 2012-08-13 | 2012-08-14 |  | Niyaz Abbasov | 16h |
| 4 | 1.1.2 | İstifadəçi səlahiyyətlərini idarə etmək | manual | 1d | 2012-08-15 | 2012-08-15 | 3 | Niyaz Abbasov | 8h |
| 5 | 1.1.3 | İstifadəçinin məlumatlarını redaktə etmək | manual | 1d | 2012-08-16 | 2012-08-16 | 4 | Niyaz Abbasov | 8h |
| 6 | 1.1.4 | İstifadəçi silmək | manual | 1d | 2012-08-16 | 2012-08-17 | 5 | Niyaz Abbasov | 8h |
| 7 | 1.2 | İstifadəçilərin avtorizasiya olunması | manual | 1d | 2012-08-20 | 2012-08-20 | 6 | Niyaz Abbasov | 8h |
| 8 | 1.3 | **Yayım Nöqtələri Qrupu və Yayım Nöqtələrinin ierarxik strukturda idarə olunması** |  | 32d | 2012-08-09 | 2012-09-21 |  |  | 278h |
| 9 | 1.3.1 | **Yayım Nöqtələri Qrupunun idarə olunması** |  | 10d | 2012-08-09 | 2012-08-22 |  |  | 88h |
| 10 | 1.3.1.1 | Mövcüd Yayım Nöqtələri Qruplarının siyahısına baxmaq | manual | 6d | 2012-08-09 | 2012-08-16 |  | Elbəy Əliyev | 48h |
| 11 | 1.3.1.2 | Yayım Nöqtələri Qrupu əlavə etmək | manual | 1d | 2012-08-17 | 2012-08-17 | 10 | Elbəy Əliyev | 8h |
| 12 | 1.3.1.3 | Yayım Nöqtələri Qrupunu redaktə etmək | manual | 2d | 2012-08-20 | 2012-08-21 | 11 | Elbəy Əliyev | 16h |
| 13 | 1.3.1.4 | Yayım Nöqtələri Qrupunu silmək | manual | 1d | 2012-08-21 | 2012-08-22 | 12 | Elbəy Əliyev | 8h |
| 14 | 1.3.1.5 | Yayım Nöqtələri Qrupuna Yayım Cədvəli mənimsətmək | manual | 1d | 2012-08-09 | 2012-08-09 |  | Elbəy Əliyev | 8h |
| 15 | 1.3.2 | **Yayım Nöqtələrinin idarə olunması** |  | 22d | 2012-08-23 | 2012-09-21 |  |  | 190h |
| 16 | 1.3.2.1 | Yayım Nöqtəsi haqqında məlumatları redaktə etmək | manual | 2d | 2012-08-23 | 2012-08-24 | 13 | Elbəy Əliyev | 15h |
| 17 | 1.3.2.2 | Yayım Nöqtəsi üçün yayım cədvəli təyin etmək | manual | 0.88d | 2012-08-23 | 2012-08-23 |  | Elbəy Əliyev | 6h |
| 18 | 1.3.2.3 | Yayım Nöqtəsinə qurğu əlavə etmək | manual | 2d | 2012-08-27 | 2012-08-28 | 16 | Elbəy Əliyev | 15h |
| 19 | 1.3.2.4 | Yayım nöqtəsinin qurğularını redaktə etmək | manual | 4d | 2012-08-28 | 2012-09-03 | 18 | Elbəy Əliyev | 32h |
| 20 | 1.3.2.5 | Yayım Nöqtəsinin ekranının idarə olunması | manual | 8d | 2012-09-04 | 2012-09-14 | 19 | Elbəy Əliyev | 64h |
| 21 | 1.3.2.6 | Yayım nöqtələrinin ekran sahələrində yayımlanan mediaya baxmaq | manual | 3d | 2012-09-14 | 2012-09-19 | 20 | Elbəy Əliyev | 24h |
| 22 | 1.3.2.7 | Yayım nöqtələrinə aid olan kameraların görüntüsünə baxmaq | manual | 2d | 2012-09-19 | 2012-09-21 | 21 | Elbəy Əliyev | 16h |
| 23 | 1.3.2.8 | Yayım nöqtəsinə və ya onun seçilmiş Ekran sahəsinə Yayım Cədvəli təyin etmək | manual | 1.88d | 2012-08-23 | 2012-08-24 |  | Elbəy Əliyev | 14h |
| 24 | 1.3.2.9 | Yayım Nöqtəsini silmək | manual | 0.5d | 2012-09-21 | 2012-09-21 | 22 | Elbəy Əliyev | 4h |

| ID | WBS | Task | Type | Duration | Start | Finish | Predecessors | Resources | Work |
| --- | --- | --- | --- | --- | --- | --- | --- | --- | --- |
| 25 | 1.4 | **Media idarə olunması** |  | 11.12d | 2012-08-30 | 2012-09-13 |  |  | 88h |
| 26 | 1.4.1 | Serverdə mövcüd olan Media-ların siyahısına baxmaq | manual | 4d | 2012-08-30 | 2012-09-04 | 37 | Turqut Mehdiyev | 32h |
| 27 | 1.4.2 | Serverə Media əlavə etmək | manual | 4d | 2012-09-05 | 2012-09-10 | 26 | Turqut Mehdiyev | 32h |
| 28 | 1.4.3 | Media-nı redaktə etmək | manual | 2d | 2012-09-11 | 2012-09-12 | 27 | Turqut Mehdiyev | 16h |
| 29 | 1.4.4 | Medianı silmək | manual | 1d | 2012-09-13 | 2012-09-13 | 28 | Turqut Mehdiyev | 8h |
| 30 | 1.5 | **Media Qrupların idarə olunması** |  | 10.5d | 2012-08-15 | 2012-08-29 |  |  | 80h |
| 31 | 1.5.1 | Serverdə mövcud Media Qrupların siyahısına baxmaq | manual | 2d | 2012-08-15 | 2012-08-17 | 61 | Turqut Mehdiyev | 16h |
| 32 | 1.5.2 | Media qrup əlavə etmək | manual | 3d | 2012-08-20 | 2012-08-22 | 31 | Turqut Mehdiyev | 24h |
| 33 | 1.5.3 | Media qrupu redaktə etmək | manual | 1d | 2012-08-23 | 2012-08-23 | 32 | Turqut Mehdiyev | 8h |
| 34 | 1.5.4 | Media qrupa media əlavə etmək | manual | 1d | 2012-08-24 | 2012-08-24 | 33 | Turqut Mehdiyev | 8h |
| 35 | 1.5.5 | Media qrupdan media silmək | manual | 0.5d | 2012-08-27 | 2012-08-27 | 34 | Turqut Mehdiyev | 4h |
| 36 | 1.5.6 | Media-nı bir qrupdan digərinə keçirmək | manual | 2d | 2012-08-27 | 2012-08-29 | 35 | Turqut Mehdiyev | 16h |
| 37 | 1.5.7 | Media Qrupu silmək | manual | 0.5d | 2012-08-29 | 2012-08-29 | 36 | Turqut Mehdiyev | 4h |
| 38 | 1.6 | **Yayım Cədvəllərinin idarə olunması** |  | 18d | 2012-08-28 | 2012-09-20 |  |  | 144h |
| 39 | 1.6.1 | Yeni Yayım Cədvəli əlavə etmək | manual | 3d | 2012-08-27 | 2012-08-30 | 64 | Niyaz Abbasov | 24h |
| 40 | 1.6.2 | Yayım Cədvəlini redaktə etmək | manual | 1d | 2012-08-31 | 2012-08-31 | 39 | Niyaz Abbasov | 8h |
| 41 | 1.6.3 | Yayım Cədvəlinə element əlavə etmək | manual | 4d | 2012-09-03 | 2012-09-06 | 40 | Niyaz Abbasov | 32h |
| 42 | 1.6.4 | Yayım Cədvəli elementini redaktə etmək | manual | 2d | 2012-09-07 | 2012-09-10 | 41 | Niyaz Abbasov | 16h |
| 43 | 1.6.5 | Yayım Cədvəlinin yayım ardıcıllığını analiz etmək | manual | 3d | 2012-09-11 | 2012-09-13 | 42 | Niyaz Abbasov | 24h |
| 44 | 1.6.6 | Yayım Cədvəlini kriteriyalar üzrə analiz etmək | manual | 3d | 2012-09-14 | 2012-09-18 | 43 | Niyaz Abbasov | 24h |
| 45 | 1.6.7 | Yayım Cədvəlini təsdiqləmək | manual | 1d | 2012-09-19 | 2012-09-19 | 44 | Niyaz Abbasov | 8h |
| 46 | 1.6.8 | Yayım Cədvəlinin elementini silmək | manual | 1d | 2012-09-19 | 2012-09-20 | 45 | Niyaz Abbasov | 8h |
| 47 | 1.7 | **Növbədənkənar yayımların idarə olunması** |  | 20d | 2012-09-24 | 2012-10-19 |  |  | 160h |
| 48 | 1.7.1 | Dərhal yayım | manual | 10d | 2012-09-24 | 2012-10-05 | 80 | Turqut Mehdiyev | 80h |
| 49 | 1.7.2 | Plan üzrə yayım | manual | 10d | 2012-10-08 | 2012-10-19 | 48 | Turqut Mehdiyev | 80h |
| 50 | 1.8 | Diktor yayımının idarə olunması | manual | 20d | 2012-09-24 | 2012-10-19 | 24 | Elbəy Əliyev | 160h |

| ID | WBS | Task | Type | Duration | Start | Finish | Predecessors | Resources | Work |
| --- | --- | --- | --- | --- | --- | --- | --- | --- | --- |
| 51 | 1.9 | **Hesabatlar** |  | 34d | 2012-10-05 | 2012-11-21 |  |  | 199h |
| 52 | 1.9.1 | Əməliyyatlar üzrə hesabatlar | manual | 7d | 2012-10-05 | 2012-10-15 | 74 | Niyaz Abbasov | 55h |
| 53 | 1.9.2 | Yayım üzrə hesabatlar | manual | 8d | 2012-11-12 | 2012-11-21 | 75 | Turqut Mehdiyev | 64h |
| 54 | 1.9.3 | **Monitorinq** |  | 16d | 2012-10-16 | 2012-11-06 |  |  | 80h |
| 55 | 1.9.3.1 | İstifadəçilər üzrə monitorinq | manual | 5d | 2012-10-16 | 2012-10-22 | 52 | Niyaz Abbasov | 40h |
| 56 | 1.9.3.2 | Yayım nöqtələri üzrə monitorinq | manual | 5d | 2012-10-31 | 2012-11-06 | 76 | Elbəy Əliyev | 40h |
| 58 | 2 | **MS Server** |  | 28d | 2012-08-07 | 2012-09-13 |  |  | 131h |
| 59 | 2.1 | Verilənlər bazasının qurulması | manual | 0.5d | 2012-08-07 | 2012-08-07 |  | Turqut Mehdiyev | 4h |
| 60 | 2.2 | Verilənlər bazasına qoşulmaq və məlumatların idarə olunması üçün funksionallıq | manual | 3d | 2012-08-07 | 2012-08-10 | 59 | Turqut Mehdiyev | 24h |
| 61 | 2.3 | Serverə gələn sorğuların qəbulu və filtrasiyası üçün funksionallıq | manual | 3d | 2012-08-10 | 2012-08-15 | 60 | Turqut Mehdiyev | 24h |
| 62 | 2.4 | FTP serverin qurulması | manual | 1d | 2012-08-07 | 2012-08-07 |  | Elbəy Əliyev | 8h |
| 63 | 2.5 | Yayım cədvəlinin fayl təsvirinin yaradılması üçün funksionallıq | manual | 2d | 2012-08-22 | 2012-08-23 | 79 | Niyaz Abbasov | 15h |
| 64 | 2.6 | Yayım cədvəlinin fayl təsvirinin yayım nöqtəsinə göndərilməsi üçün funksionallıq | manual | 2d | 2012-08-23 | 2012-08-27 | 63 | Niyaz Abbasov | 16h |
| 65 | 2.7 | Media faylların serverə əlavə olunması üçün funksionallıq | manual | 2d | 2012-09-14 | 2012-09-17 | 29 | Turqut Mehdiyev | 16h |
| 66 | 2.8 | Media faylların serverdən yayım nötələrinə göndərilməsi üçün funksionallıq | manual | 3d | 2012-09-18 | 2012-09-20 | 65 | Turqut Mehdiyev | 24h |
| 68 | 3 | **MS Broadcaster** |  | 36.12d | 2012-09-21 | 2012-11-09 |  |  | 252h |
| 69 | 3.1 | **Media Playerin yaradılması** |  | 11d | 2012-10-22 | 2012-11-05 |  |  | 88h |
| 70 | 3.1.1 | Lokal media faylların yayımlanması üçün funksionallıq (Audio, Video, Şəkil) | manual | 8d | 2012-10-22 | 2012-10-31 | 49 | Turqut Mehdiyev | 64h |
| 71 | 3.1.2 | "Running Text"-in yayımlanması | manual | 3d | 2012-11-01 | 2012-11-05 | 70 | Turqut Mehdiyev | 24h |
| 72 | 3.2 | Təyin olunmuş ekran sahələrində yayımın aparılması üçün funksionallıq | manual | 2d | 2012-11-06 | 2012-11-07 | 71 | Turqut Mehdiyev | 15h |
| 73 | 3.3 | Yayım cədvəlinə əsasən sutkalıq yayım qrafikinin generasiya olunması | manual | 5d | 2012-09-21 | 2012-09-27 | 46 | Niyaz Abbasov | 39h |
| 74 | 3.4 | Sutkalıq yayım qrafikinə əsasən yayımın aparılması üçün funksionallıq | manual | 5d | 2012-09-28 | 2012-10-04 | 73 | Niyaz Abbasov | 39h |
| 75 | 3.5 | Növbədənkənar yayımın aparılması üçün funksionallıq | manual | 2d | 2012-11-08 | 2012-11-09 | 72 | Turqut Mehdiyev | 15h |
| 76 | 3.6 | Diktor yayımının aparılması | manual | 7d | 2012-10-22 | 2012-10-30 | 50 | Elbəy Əliyev | 56h |
| 78 | 4 | Yayım cədvəlinin strukturunun təyin olunması | manual | 0.5d | 2012-08-20 | 2012-08-21 | 7 | Niyaz Abbasov | 4h |
| 79 | 5 | Yayım qrafikinin strukturunun təyin olunması | manual | 0.5d | 2012-08-21 | 2012-08-21 | 78 | Niyaz Abbasov | 4h |
| 80 | 6 | Nöbədənkənar yayım cədvəlinin strukturunun təyin olunması | manual | 0.5d | 2012-09-21 | 2012-09-21 | 66 | Turqut Mehdiyev | 4h |
